# Developing Al-Mirath

Schedule from MS Project, 2017-12-19 to 2018-02-08.

## Calendars

- Standard: Mon-Fri 08:00-12:00, 13:00-17:00; Sat-Sun off.

## Resources

| Resource |
| --- |
| Management |
| Project Manager |
| Analyst |
| Developer |
| Testers |
| Trainers |
| Technical Communicators |
| Deployment Team |

## Schedule

| ID | WBS | Task | Type | Duration | Start | Finish | Predecessors | Total slack | Free slack | Resources | Work |
| --- | --- | --- | --- | --- | --- | --- | --- | --- | --- | --- | --- |
| 1 | 1 | **Building Static App** |  | 7.75d | 2017-12-19 | 2017-12-28 |  | 23.25d |  | Developer | 148h |
| 2 | 1.1 | Setup MVC Project |  | 2h | 2017-12-19 | 2017-12-19 |  | 23.25d | 0d | Developer | 2h |
| 3 | 1.2 | Design The Layout & Theme |  | 4h | 2017-12-19 | 2017-12-19 | 2 | 23.25d | 0d | Developer | 4h |
| 4 | 1.3 | Design The Pages |  | 3d | 2017-12-19 | 2017-12-22 | 3 | 23.25d | 0d | Developer | 24h |
| 5 | 1.4 | Call The Printer API |  | 1d | 2017-12-22 | 2017-12-25 | 4 | 23.25d | 0d | Developer | 8h |
| 6 | 1.5 | Review With Stakeholder |  | 3d | 2017-12-25 | 2017-12-28 | 5 | 23.25d | 0d | Developer; Technical Communicators | 48h |
| 7 | 2 | **Moving Data Into Controllers** |  | 7d | 2017-12-28 | 2018-01-08 |  | 23.25d |  | Developer | 104h |
| 8 | 2.1 | Ask for the needed Ayat |  | 1d | 2017-12-28 | 2017-12-29 | 6 | 23.25d | 0d | Analyst | 8h |
| 9 | 2.2 | Get Ayat from API |  | 1d | 2017-12-29 | 2018-01-01 | 8 | 23.25d | 0d | Analyst | 8h |
| 10 | 2.3 | Get Alwaratha from page |  | 1d | 2018-01-01 | 2018-01-02 | 9 | 23.25d | 0d | Project Manager | 8h |
| 11 | 2.4 | Use controller to show results |  | 1d | 2018-01-02 | 2018-01-03 | 10 | 23.25d | 0d | Project Manager; Analyst | 16h |
| 12 | 2.5 | Use controller to show details |  | 1d | 2018-01-03 | 2018-01-04 | 11 | 23.25d | 0d | Analyst | 8h |
| 13 | 2.6 | Test and verify |  | 2d | 2018-01-04 | 2018-01-08 | 12 | 23.25d |  |  |  |
| 14 | 3 | **Developing The Algorithms API** |  | 11d | 2017-12-19 | 2018-01-02 |  | 0d |  | Developer | 152h |
| 15 | 3.1 | Understand the rules |  | 1d | 2017-12-19 | 2017-12-19 |  | 0d |  | Developer | 8h |
| 16 | 3.2 | Design the algorithms |  | 2d | 2017-12-20 | 2017-12-21 | 15 | 0d |  | Developer | 16h |
| 17 | 3.3 | Develop the algorithms |  | 2d | 2017-12-22 | 2017-12-25 | 16 | 0d |  | Developer | 16h |
| 18 | 3.4 | Test algorithms with Postman |  | 1d | 2017-12-26 | 2017-12-26 | 17 | 0d |  | Developer | 8h |
| 19 | 3.5 | Call API from controller |  | 2d | 2017-12-27 | 2017-12-28 | 18 | 0d |  | Developer | 16h |
| 20 | 3.6 | Develop controller/API error trapping |  | 3d | 2017-12-29 | 2018-01-02 | 19 | 0d |  |  |  |
| 21 | 4 | **Result Printing** |  | 0d | 2017-12-19 | 2017-12-19 |  |  |  |  | 280h |
| 22 | 4.1 | Develop unit test plans using product specifications |  | 4d | 2017-12-19 | 2017-12-22 |  | 7d |  | Testers | 32h |
| 23 | 4.2 | Develop integration test plans using product specifications |  | 4d | 2017-12-19 | 2017-12-22 |  | 34d |  | Testers | 32h |
| 24 | 4.3 | **Unit Testing** |  | 15d | 2018-01-03 | 2018-01-23 |  | 0d |  |  | 120h |
| 25 | 4.3.1 | Review modular code |  | 5d | 2018-01-03 | 2018-01-09 | 22, 20 | 0d |  | Testers | 40h |
| 26 | 4.3.2 | Test component modules to product specifications |  | 2d | 2018-01-10 | 2018-01-11 | 20, 25 | 0d |  | Testers | 16h |
| 27 | 4.3.3 | Identify anomalies to product specifications |  | 3d | 2018-01-12 | 2018-01-16 | 26 | 0d |  | Testers | 24h |
| 28 | 4.3.4 | Modify code |  | 3d | 2018-01-17 | 2018-01-19 | 27 | 0d |  | Testers | 24h |
| 29 | 4.3.5 | Re-test modified code |  | 2d | 2018-01-22 | 2018-01-23 | 28 | 0d |  | Testers | 16h |
| 30 | 4.3.6 | Unit testing complete | milestone | 0d | 2018-01-23 | 2018-01-23 | 29 | 0d |  |  |  |

| ID | WBS | Task | Type | Duration | Start | Finish | Predecessors | Total slack | Free slack | Resources | Work |
| --- | --- | --- | --- | --- | --- | --- | --- | --- | --- | --- | --- |
| 31 | 4.4 | **Integration Testing** |  | 12d | 2018-01-24 | 2018-02-08 |  | 0d |  |  | 96h |
| 32 | 4.4.1 | Test module integration |  | 5d | 2018-01-24 | 2018-01-30 | 30 | 0d |  | Testers | 40h |
| 33 | 4.4.2 | Identify anomalies to specifications |  | 2d | 2018-01-31 | 2018-02-01 | 32 | 0d |  | Testers | 16h |
| 34 | 4.4.3 | Modify code |  | 3d | 2018-02-02 | 2018-02-06 | 33 | 0d |  | Testers | 24h |
| 35 | 4.4.4 | Re-test modified code |  | 2d | 2018-02-07 | 2018-02-08 | 34 | 0d |  | Testers | 16h |
| 36 | 4.4.5 | Integration testing complete | milestone | 0d | 2018-02-08 | 2018-02-08 | 35 | 0d |  |  |  |
| 37 | 5 | **Details Printing** |  | 0d | 2017-12-19 | 2017-12-19 |  |  |  |  | 256h |
| 38 | 5.1 | Develop training specifications for end users |  | 3d | 2017-12-19 | 2017-12-21 |  | 11d | 8d | Trainers | 24h |
| 39 | 5.2 | Develop training specifications for helpdesk support staff |  | 3d | 2017-12-19 | 2017-12-21 |  | 11d | 8d | Trainers | 24h |
| 40 | 5.3 | Identify training delivery methodology (computer based training, classroom, etc.) |  | 2d | 2017-12-19 | 2017-12-20 |  | 12d | 9d | Trainers | 16h |
| 41 | 5.4 | Develop training materials |  | 3w | 2018-01-03 | 2018-01-23 | 38, 20, 39, 40 | 3d | 0d | Trainers | 120h |
| 42 | 5.5 | Conduct training usability study |  | 4d | 2018-01-24 | 2018-01-29 | 41 | 3d | 0d | Trainers | 32h |
| 43 | 5.6 | Finalize training materials |  | 3d | 2018-01-30 | 2018-02-01 | 42 | 3d | 0d | Trainers | 24h |
| 44 | 5.7 | Develop training delivery mechanism |  | 2d | 2018-02-02 | 2018-02-05 | 43 | 3d | 0d | Trainers | 16h |
| 45 | 5.8 | Training materials complete | milestone | 0d | 2018-02-05 | 2018-02-05 | 44 | 3d |  |  |  |
| 46 | 6 | **Testing** |  | 0d | 2017-12-19 | 2017-12-19 |  |  |  |  | 336h |
| 47 | 6.1 | Develop Help specification |  | 1d | 2017-12-19 | 2017-12-19 |  | 17d | 4.5d | Technical Communicators | 8h |
| 48 | 6.2 | Develop Help system |  | 3w | 2017-12-26 | 2018-01-16 | 47, 18FS-5% | 12.5d | 0d | Technical Communicators | 120h |
| 49 | 6.3 | Review Help documentation |  | 3d | 2018-01-16 | 2018-01-19 | 48 | 12.5d | 0d | Technical Communicators | 24h |
| 50 | 6.4 | Incorporate Help documentation feedback |  | 2d | 2018-01-19 | 2018-01-23 | 49 | 12.5d | 0d | Technical Communicators | 16h |
| 51 | 6.5 | Develop user manuals specifications |  | 2d | 2017-12-19 | 2017-12-20 |  | 17d | 3.5d | Technical Communicators | 16h |
| 52 | 6.6 | Develop user manuals |  | 3w | 2017-12-26 | 2018-01-16 | 51, 18FS-5% | 13.5d | 0d | Technical Communicators | 120h |
| 53 | 6.7 | Review all user documentation |  | 2d | 2018-01-16 | 2018-01-18 | 52 | 13.5d | 0d | Technical Communicators | 16h |
| 54 | 6.8 | Incorporate user documentation feedback |  | 2d | 2018-01-18 | 2018-01-22 | 53 | 13.5d | 1d | Technical Communicators | 16h |
| 55 | 6.9 | Documentation complete | milestone | 0d | 2018-01-23 | 2018-01-23 | 54, 50 | 12.5d |  |  |  |

| ID | WBS | Task | Type | Duration | Start | Finish | Predecessors | Total slack | Free slack | Resources | Work |
| --- | --- | --- | --- | --- | --- | --- | --- | --- | --- | --- | --- |
| 56 | 7 | **Deployment** |  | 1d | 2017-12-19 | 2017-12-19 |  |  |  |  | 40h |
| 57 | 7.1 | Determine final deployment strategy |  | 1d | 2017-12-19 | 2017-12-19 |  | 30d | 0d | Deployment Team | 8h |
| 58 | 7.2 | Develop deployment methodology |  | 1d | 2017-12-20 | 2017-12-20 | 57 | 30d | 0d | Deployment Team | 8h |
| 59 | 7.3 | Secure deployment resources |  | 1d | 2017-12-21 | 2017-12-21 | 58 | 30d | 0d | Deployment Team | 8h |
| 60 | 7.4 | Train support staff |  | 1d | 2017-12-22 | 2017-12-22 | 59 | 30d | 0d | Deployment Team | 8h |
| 61 | 7.5 | Deploy software |  | 1d | 2017-12-25 | 2017-12-25 | 60 | 30d | 0d | Deployment Team | 8h |
| 62 | 7.6 | Deployment complete | milestone | 0d | 2017-12-25 | 2017-12-25 | 61 | 30d | 0d |  |  |
| 63 | 8 | **Post Implementation Review** |  | 1d | 2017-12-26 | 2017-12-26 |  |  |  |  | 24h |
| 64 | 8.1 | Document lessons learned |  | 1d | 2017-12-26 | 2017-12-26 | 62 | 30d | 0d | Project Manager | 8h |
| 65 | 8.2 | Distribute to team members |  | 1d | 2017-12-27 | 2017-12-27 | 64 | 30d | 0d | Project Manager | 8h |
| 66 | 8.3 | Create software maintenance team |  | 1d | 2017-12-28 | 2017-12-28 | 65 | 30d | 0d | Project Manager | 8h |
| 67 | 8.4 | Post implementation review complete | milestone | 0d | 2017-12-28 | 2017-12-28 | 66 | 30d |  |  |  |
